# CRM Online

Schedule from MS Project, 2012-09-01 to 2012-10-31, A marks actual dates.
.

## Calendars

- Padrão: Mon-Fri 08:00-12:00, 13:00-17:00; Sat 08:00-13:00; Sun off.

## Resources

| Resource |
| --- |
| Israel |
| Rômulo |
| Túlio |
| Wander |

## Schedule

| ID | WBS | Task | Duration | Start | Finish | Predecessors | Complete | Remaining | Baseline start | Baseline finish | Baseline duration | Total slack | Free slack | Constraint | Deadline | Resources | Work | Actual work |
| --- | --- | --- | --- | --- | --- | --- | --- | --- | --- | --- | --- | --- | --- | --- | --- | --- | --- | --- |
| 1 | 1 | **Entrega 03** | 17.5d | 2012-09-01 A | 2012-09-23 A |  | 100% |  | 2012-09-01 | 2012-09-14 | 10.38d |  |  |  |  |  | 118h | 118h |
| 2 | 1.1 | **Especificação** | 12.88d | 2012-09-07 A | 2012-09-23 A |  | 100% |  | 2012-09-04 | 2012-09-11 | 6.25d |  |  |  |  |  | 44h | 44h |
| 3 | 1.1.1 | Introdução | 0.5d | 2012-09-21 A | 2012-09-21 A |  | 100% |  | 2012-09-04 | 2012-09-06 | 2.5d |  |  |  | 2012-09-22 | Túlio | 4h | 4h |
| 4 | 1.1.2 | Descrição Geral | 3d | 2012-09-07 A | 2012-09-11 A |  | 100% |  | 2012-09-04 | 2012-09-06 | 2.5d |  |  |  | 2012-09-22 | Wander | 24h | 24h |
| 5 | 1.1.3 | **Requisitos Específicos** | 1.62d | 2012-09-21 A | 2012-09-23 A |  | 100% |  | 2012-09-04 | 2012-09-11 | 6.25d |  |  |  |  |  | 16h | 16h |
| 6 | 1.1.3.1 | Interfaces do Sistema | 0.62d | 2012-09-22 A | 2012-09-23 A |  | 100% |  | 2012-09-04 | 2012-09-07 |  |  |  | start no earlier than 2012-09-21 | 2012-09-22 | Israel | 8h | 8h |
| 7 | 1.1.3.2 | Requisitos Funcionais | 0.5d | 2012-09-21 A | 2012-09-22 A | 8 | 100% |  | 2012-09-04 | 2012-09-07 | 3.75d |  |  |  | 2012-09-22 | Túlio | 4h | 4h |
| 8 | 1.1.3.3 | Requisitos Não Funcionais | 0.5d | 2012-09-21 A | 2012-09-21 A | 3 | 100% |  | 2012-09-06 | 2012-09-11 | 3.75d |  |  |  | 2012-09-22 | Túlio | 4h | 4h |
| 9 | 1.2 | **Diagramas** | 16.88d | 2012-09-01 A | 2012-09-21 A |  | 100% |  | 2012-09-01 | 2012-09-14 | 10.38d |  |  |  |  |  | 74h | 74h |
| 10 | 1.2.1 | Casos de Uso | 2d | 2012-09-01 A | 2012-09-04 A |  | 100% |  | 2012-09-01 | 2012-09-04 | 2.5d |  |  |  | 2012-09-22 | Rômulo | 16h | 16h |
| 11 | 1.2.2 | **Sequência** | 0.25d | 2012-09-20 A | 2012-09-20 A |  | 100% |  | 2012-09-06 | 2012-09-10 | 2.5d |  |  |  |  |  | 2h | 2h |
| 12 | 1.2.2.1 | Gerenciar Permissões de Usuários | 0.25d | 2012-09-20 A | 2012-09-20 A | 4 | 100% |  | 2012-09-06 | 2012-09-10 | 2.5d |  |  |  | 2012-09-22 | Wander | 2h | 2h |
| 13 | 1.2.3 | Atividades (incl. Atores) | 1d | 2012-09-21 A | 2012-09-21 A | 4 | 100% |  | 2012-09-10 | 2012-09-12 | 2.5d |  |  |  | 2012-09-22 | Wander | 8h | 8h |
| 14 | 1.2.4 | Classes de Domínio | 2d | 2012-09-04 A | 2012-09-06 A | 10 | 100% |  | 2012-09-04 | 2012-09-07 | 2.5d |  |  |  | 2012-09-22 | Rômulo | 16h | 16h |
| 15 | 1.2.5 | Implantação | 2d | 2012-09-14 A | 2012-09-17 A | 14 | 100% |  | 2012-09-11 | 2012-09-14 | 2.5d |  |  |  | 2012-09-22 | Rômulo | 16h | 16h |
| 16 | 1.2.6 | Banco de Dados | 2d | 2012-09-10 A | 2012-09-11 A |  | 100% |  | 2012-09-11 | 2012-09-14 | 2.5d |  |  |  | 2012-09-22 | Rômulo | 16h | 16h |
| 17 | 2 | **Entrega 04** | 20.62d | 2012-09-12 A | 2012-10-08 |  | 11% | 18.42d | 2012-09-12 | 2012-09-28 | 12.5d | -5.75d | 0d |  |  |  | 196h | 21h |
| 18 | 2.1 | **Código Fonte** | 20.38d | 2012-09-12 A | 2012-10-08 |  | 10% | 18.34d | 2012-09-12 | 2012-09-26 | 11.25d | -5.75d | 0d |  |  |  | 150h | 15h |
| 19 | 2.1.1 | Gerenciar Clientes | 3.75d | 2012-09-12 A | 2012-10-02 | 26 | 50% | 1.88d | 2012-09-12 | 2012-09-20 | 6.25d | -5.75d | 0d |  | 2012-09-29 | Rômulo | 30h | 15h |
| 20 | 2.1.2 | Gerenciar Permissões de Usuários | 3.75d | 2012-10-03 | 2012-10-08 | 19 |  |  | 2012-09-21 | 2012-09-26 | 3.75d | -5.75d | 0d |  | 2012-09-29 | Rômulo | 30h |  |
| 21 | 2.1.3 | Gerenciar Usuários | 3.75d | 2012-09-25 | 2012-09-28 | 13 |  |  | 2012-09-14 | 2012-09-21 | 6.25d | -2.88d | 0d | start no earlier than 2012-09-24 | 2012-09-29 | Wander | 30h |  |
| 22 | 2.1.4 | Gerenciar Empresa | 3.75d | 2012-09-25 | 2012-09-28 | 7 |  |  | 2012-09-14 | 2012-09-21 | 6.25d | 0.88d |  | start no earlier than 2012-09-24 | 2012-09-29 | Túlio | 30h |  |
| 23 | 2.1.5 | Gerenciar Atividades | 3.75d | 2012-09-25 | 2012-09-28 | 6 |  |  | 2012-09-14 | 2012-09-21 | 6.25d | -0.38d | 0d | start no earlier than 2012-09-24 | 2012-09-29 | Israel | 30h |  |
| 24 | 2.2 | Manual | 1.25d | 2012-09-28 | 2012-10-01 | 23 |  |  | 2012-09-21 | 2012-09-25 | 2.5d | -0.38d | 0d |  | 2012-09-29 | Israel | 10h |  |
| 25 | 2.3 | Stored Procedure | 0.5d | 2012-09-21 A | 2012-09-24 A |  | 100% |  | 2012-09-21 | 2012-09-25 | 2.5d |  |  |  | 2012-09-29 | Rômulo | 4h | 4h |
| 26 | 2.4 | Script Banco de Dados | 0.25d | 2012-09-12 A | 2012-09-12 A | 16 | 100% |  | 2012-09-26 | 2012-09-28 | 1.25d |  |  |  | 2012-09-29 | Rômulo | 2h | 2h |
| 27 | 2.5 | Diagrama de Classes do Sistema | 3.75d | 2012-09-28 | 2012-10-03 | 21 |  |  | 2012-09-20 | 2012-09-25 | 3.75d | -2.88d | 0d |  | 2012-09-29 | Wander | 30h |  |

| ID | WBS | Task | Duration | Start | Finish | Predecessors | Baseline start | Baseline finish | Baseline duration | Total slack | Free slack | Deadline | Resources | Work |
| --- | --- | --- | --- | --- | --- | --- | --- | --- | --- | --- | --- | --- | --- | --- |
| 28 | 3 | **Entrega 06** | 17.88d | 2012-10-01 | 2012-10-23 |  | 2012-09-28 | 2012-10-23 | 20d | 2d |  |  |  | 320h |
| 29 | 3.1 | Aplicativo Android | 12.5d | 2012-10-08 | 2012-10-23 | 27, 20 | 2012-09-28 | 2012-10-13 | 12.5d | -1.38d | 0d | 2012-10-21 | Rômulo; Wander | 200h |
| 30 | 3.2 | Testes de Software | 5d | 2012-10-01 | 2012-10-06 | 24, 25 | 2012-10-13 | 2012-10-19 | 5d | 12.38d | 0d | 2012-10-28 | Israel; Túlio | 80h |
| 31 | 3.3 | Avaliação de Interfaces | 2.5d | 2012-10-06 | 2012-10-10 | 30 | 2012-10-19 | 2012-10-23 | 2.5d | 12.38d | 0d | 2012-11-04 | Israel; Túlio | 40h |
| 32 | 4 | **Entrega 05** | 17.38d | 2012-10-10 | 2012-10-31 |  | 2012-10-23 | 2012-11-13 | 17d | 0d |  |  |  | 136h |
| 33 | 4.1 | Casos de Uso no GitHub | 5d | 2012-10-10 | 2012-10-16 | 31 | 2012-10-23 | 2012-10-29 | 5d | 12.38d |  | 2012-11-19 | Israel | 40h |
| 34 | 4.2 | Classes de Teste | 5d | 2012-10-10 | 2012-10-16 | 31 | 2012-10-30 | 2012-11-05 | 5d | 12.38d |  | 2012-11-19 | Túlio | 40h |
| 35 | 4.3 | Documentação dos Ciclos de TDD | 5d | 2012-10-23 | 2012-10-29 | 29 | 2012-11-05 | 2012-11-10 | 5d | 0d |  | 2012-11-19 | Wander | 40h |
| 36 | 4.4 | Prontificação do GitHub Atualizado | 2d | 2012-10-29 | 2012-10-31 | 35 | 2012-11-10 | 2012-11-13 | 2d | 0d |  | 2012-11-19 | Rômulo | 16h |
